# Project Plan

How a schedule from MS Project changed from version to version. A marks actual dates.

## Version 1 (saved 2023-03-03)

Note of the change: #236

| ID | WBS | Task | Duration | Start | Finish | Predecessors | Total float |
| --- | --- | --- | --- | --- | --- | --- | --- |
| 1 | 1 | **Planning BI Solution** | 38d | 2023-04-03 | 2023-05-24 |  | 0d |
| 2 |  | Project Scope | 20d | 2023-04-03 | 2023-04-28 |  | 0d |
| 3 |  | Required BI Software | 20d | 2023-04-03 | 2023-04-28 |  | 0d |
| 4 | 1.3 | **Planning SQL Server Business Intelligence Infrastructure** | 1d | 2023-05-01 | 2023-05-01 | 2, 3 | 0d |
| 5 |  | BI Topology | 1d | 2023-05-01 | 2023-05-01 |  | 0d |
| 6 |  | Planning Data Warehouse Hardware | 1d | 2023-05-01 | 2023-05-01 |  | 0d |
| 7 | 1.4 | **Designing Data Warehouse** | 12d | 2023-05-02 | 2023-05-17 | 4 | 0d |
| 8 | 1.4.1 | **Designing Data Warehouse Logical Schema** | 10d | 2023-05-02 | 2023-05-15 |  | 0d |
| 9 |  | Identify business processes | 2d | 2023-05-02 | 2023-05-03 |  | 0d |
| 10 |  | Designing Dimension Models and Data Warehouse Tables | 2d | 2023-05-04 | 2023-05-05 | 9 | 6d |
| 11 |  | Data source profiling | 5d | 2023-05-04 | 2023-05-10 | 9 | 0d |
| 12 |  | Dimension | 3d | 2023-05-11 | 2023-05-15 | 11 | 0d |
| 13 |  | Fact | 3d | 2023-05-11 | 2023-05-15 | 11 | 0d |
| 14 | 1.4.2 | **Designing Data Warehouse Physical Implementation** | 2d | 2023-05-16 | 2023-05-17 | 8 | 0d |
| 15 |  | Designing File Storage | 1d | 2023-05-16 | 2023-05-16 |  | 0d |
| 16 |  | Partitioning | 1d | 2023-05-17 | 2023-05-17 | 15 | 0d |
| 17 |  | Indexes | 1d | 2023-05-17 | 2023-05-17 | 15 | 0d |
| 18 |  | Compression | 1d | 2023-05-17 | 2023-05-17 | 15 | 0d |
| 19 |  | Views | 1d | 2023-05-17 | 2023-05-17 | 15 | 0d |
| 20 |  | Designing ETL Solution | 5d | 2023-05-18 | 2023-05-24 | 7 | 0d |
| 21 | 1.6 | **Planning BI Delivery Solution** | 7d | 2023-05-16 | 2023-05-24 | 8 | 0d |
| 22 |  | Reporting Requirements | 7d | 2023-05-16 | 2023-05-24 |  | 0d |
| 23 | 2 | **Implementing BI Solution** | 35d | 2023-05-25 | 2023-07-12 | 1 | 0d |
| 24 | 2.1 | **Implementing Data Warehouse** | 5d | 2023-05-25 | 2023-05-31 |  | 0d |
| 25 |  | Implementing Data Warehouse Logical Schema | 5d | 2023-05-25 | 2023-05-31 |  | 0d |
| 26 |  | Implementing Data Warehouse Physical Implementation | 5d | 2023-05-25 | 2023-05-31 |  | 0d |
| 27 | 2.2 | **Implementing ETL** | 15d | 2023-06-01 | 2023-06-21 | 24 | 0d |
| 28 |  | Implementing Integration Packages | 15d | 2023-06-01 | 2023-06-21 |  | 0d |
| 29 |  | Implementing DQS | 15d | 2023-06-01 | 2023-06-21 |  | 0d |
| 30 |  | Implementing MDS | 15d | 2023-06-01 | 2023-06-21 |  | 0d |
| 31 |  | Implementing BI delivery solution | 15d | 2023-06-22 | 2023-07-12 | 24, 27 | 0d |
| 32 |  | RELEASE 1 | 0d | 2023-07-12 | 2023-07-12 | 23 | 0d |

## Version 2 (saved 2023-03-04)

Note of the change: #235

Last finish 2023-07-12 → 2023-07-10 (-2d).

Added:

| ID | Task | Duration | Start | Finish | Predecessors |
| --- | --- | --- | --- | --- | --- |
| 21 | Designing ETL for Dimensions | 2d | 2023-05-19 | 2023-05-22 | 8 |
| 22 | Designing ETL for Facts | 3d | 2023-05-23 | 2023-05-25 | 14 |
| 34 | Testing | 10d | 2023-06-27 | 2023-07-10 | 25 |
| 35 | **Trainings** | 5d | 2023-06-27 | 2023-07-03 |  |
| 36 | Business Users | 5d | 2023-06-27 | 2023-07-03 | 33 |
| 37 | Data Stewards | 5d | 2023-06-27 | 2023-07-03 | 31, 32 |

Changed:

| ID | Task | Start | Finish | Duration | Total float | Predecessors |
| --- | --- | --- | --- | --- | --- | --- |
| 1 | **Planning BI Solution** |  | 2023-05-24 → 2023-05-29 (+5d) | 38d → 41d |  |  |
| 2 | Project Scope |  | 2023-04-28 → 2023-05-05 (+7d) | 20d → 25d |  |  |
| 3 | Required BI Software | 2023-04-03 → 2023-05-08 (+35d) | 2023-04-28 → 2023-05-09 (+11d) | 20d → 2d | 0d → 13d | none → 2 |
| 4 | **Planning SQL Server Business Intelligence Infrastructure** | 2023-05-01 → 2023-05-10 (+9d) | 2023-05-01 → 2023-05-10 (+9d) |  | 0d → 13d |  |
| 5 | BI Topology | 2023-05-01 → 2023-05-10 (+9d) | 2023-05-01 → 2023-05-10 (+9d) |  | 0d → 13d |  |
| 6 | Planning Data Warehouse Hardware | 2023-05-01 → 2023-05-10 (+9d) | 2023-05-01 → 2023-05-10 (+9d) |  | 0d → 13d |  |
| 7 | **Designing Data Warehouse** | 2023-05-02 → 2023-05-08 (+6d) | 2023-05-17 → 2023-05-22 (+5d) | 12d → 11d |  | 4 → none |
| 8 | **Designing Data Warehouse Logical Schema** | 2023-05-02 → 2023-05-08 (+6d) | 2023-05-15 → 2023-05-18 (+3d) | 10d → 9d |  | none → 2 |
| 9 | Identify business processes | 2023-05-02 → 2023-05-08 (+6d) | 2023-05-03 → 2023-05-08 (+5d) | 2d → 1d |  |  |
| 10 | Designing Dimension Models and Data Warehouse Tables | 2023-05-04 → 2023-05-09 (+5d) | 2023-05-05 → 2023-05-09 (+4d) | 2d → 1d | 6d → 7d |  |
| 11 | Data source profiling | 2023-05-04 → 2023-05-09 (+5d) | 2023-05-10 → 2023-05-15 (+5d) |  |  |  |
| 12 | Dimension | 2023-05-11 → 2023-05-16 (+5d) | 2023-05-15 → 2023-05-18 (+3d) |  |  |  |
| 13 | Fact | 2023-05-11 → 2023-05-16 (+5d) | 2023-05-15 → 2023-05-18 (+3d) |  |  |  |
| 14 | **Designing Data Warehouse Physical Implementation** | 2023-05-16 → 2023-05-19 (+3d) | 2023-05-17 → 2023-05-22 (+5d) |  | 0d → 2d |  |
| 15 | Designing File Storage | 2023-05-16 → 2023-05-19 (+3d) | 2023-05-16 → 2023-05-19 (+3d) |  | 0d → 2d |  |
| 16 | Partitioning | 2023-05-17 → 2023-05-22 (+5d) | 2023-05-17 → 2023-05-22 (+5d) |  | 0d → 2d |  |
| 17 | Indexes | 2023-05-17 → 2023-05-22 (+5d) | 2023-05-17 → 2023-05-22 (+5d) |  | 0d → 2d |  |
| 18 | Compression | 2023-05-17 → 2023-05-22 (+5d) | 2023-05-17 → 2023-05-22 (+5d) |  | 0d → 2d |  |
| 19 | Views | 2023-05-17 → 2023-05-22 (+5d) | 2023-05-17 → 2023-05-22 (+5d) |  | 0d → 2d |  |
| 20 | **Designing ETL Solution** | 2023-05-18 → 2023-05-19 (+1d) | 2023-05-24 → 2023-05-25 (+1d) |  | 0d → 2d | 7 → none |
| 23 | **Planning BI Delivery Solution** | 2023-05-16 → 2023-05-19 (+3d) | 2023-05-24 → 2023-05-29 (+5d) |  |  |  |
| 24 | Reporting Requirements | 2023-05-16 → 2023-05-19 (+3d) | 2023-05-24 → 2023-05-29 (+5d) |  |  |  |
| 25 | **Implementing BI Solution** | 2023-05-25 → 2023-05-30 (+5d) | 2023-07-12 → 2023-06-26 (-16d) | 35d → 20d |  |  |
| 26 | **Implementing Data Warehouse** | 2023-05-25 → 2023-05-30 (+5d) | 2023-05-31 → 2023-06-05 (+5d) |  |  |  |
| 27 | Implementing Data Warehouse Logical Schema | 2023-05-25 → 2023-05-30 (+5d) | 2023-05-31 → 2023-06-05 (+5d) |  |  | none → 8 |
| 28 | Implementing Data Warehouse Physical Implementation | 2023-05-25 → 2023-05-30 (+5d) | 2023-05-31 → 2023-06-05 (+5d) |  |  | none → 14 |
| 29 | **Implementing ETL** | 2023-06-01 → 2023-06-06 (+5d) | 2023-06-21 → 2023-06-26 (+5d) |  |  | 26 → 20, 26 |
| 30 | Implementing Integration Packages | 2023-06-01 → 2023-06-06 (+5d) | 2023-06-21 → 2023-06-26 (+5d) |  |  |  |
| 31 | Implementing DQS | 2023-06-01 → 2023-06-06 (+5d) | 2023-06-21 → 2023-06-26 (+5d) |  |  |  |
| 32 | Implementing MDS | 2023-06-01 → 2023-06-06 (+5d) | 2023-06-21 → 2023-06-26 (+5d) |  |  |  |
| 33 | Implementing BI delivery solution | 2023-06-22 → 2023-06-06 (-16d) | 2023-07-12 → 2023-06-26 (-16d) |  |  | 26, 29 → 26 |
| 38 | RELEASE 1 | 2023-07-12 → 2023-07-10 (-2d) | 2023-07-12 → 2023-07-10 (-2d) |  |  | 25 → 34 |
