# Northwind BI Plan from Kimball by workflows

How a schedule from MS Project changed from version to version. A marks actual dates.

## Version 1 (saved 2024-03-29)

Note of the change: #590

| ID | WBS | Task | Duration | Start | Finish | Predecessors | Total float |
| --- | --- | --- | --- | --- | --- | --- | --- |
| 1 | 1 | **Planning, analyze, design** | 42d? | 2024-02-20 | 2024-04-17 |  | 0d |
| 2 |  | Project planning | 5d | 2024-02-20 | 2024-02-26 |  | 0d |
| 3 |  | Business requirements definition | 22d | 2024-02-27 | 2024-03-27 | 2 | 0d |
| 4 |  | Technical architecture design | 1d? | 2024-03-28 | 2024-03-28 | 3 | 50d |
| 5 |  | Dimensional modelling | 2d | 2024-03-28 | 2024-03-29 | 3 | 0d |
| 6 |  | BI application design | 5d | 2024-03-28 | 2024-04-03 | 3 | 10d |
| 7 |  | Physical design | 3d | 2024-04-01 | 2024-04-03 | 5 | 0d |
| 8 |  | ETL design | 10d | 2024-04-04 | 2024-04-17 | 7 | 0d |
| 9 | 2 | **Development** | 54d | 2024-03-29 | 2024-06-12 |  | 0d |
| 10 |  | Product selection & installation | 4d | 2024-03-29 | 2024-04-03 | 4 | 50d |
| 11 |  | ETL development | 40d | 2024-04-18 | 2024-06-12 | 8 | 0d |
| 12 |  | BI application development | 40d | 2024-04-04 | 2024-05-29 | 6 | 10d |
| 13 |  | Deployment | 5d | 2024-06-13 | 2024-06-19 | 12, 10, 11 | 0d |
| 14 |  | RELEASE 1 | 0d | 2024-06-19 | 2024-06-19 | 13 | 0d |
| 15 |  | Maintenance | 10d | 2024-06-20 | 2024-07-03 | 14 | 0d |

## Version 2 (saved 2024-03-30)

Note of the change: #590

Last finish 2024-07-03 → 2024-09-19 (+78d).

Added:

| ID | Task | Duration | Start | Finish | Predecessors | Resources |
| --- | --- | --- | --- | --- | --- | --- |
| 5 | Planning software | 1d | 2024-05-07 | 2024-05-07 | 4 | Database administrator [50%]; Infrastructure specialist [50%]; BI solution architect |
| 15 | Testing | 10d | 2024-09-06 | 2024-09-19 | 14 | Tester |

Removed: 15 Maintenance

Changed:

| ID | Task | Start | Finish | Duration | Total float | Predecessors | Other |
| --- | --- | --- | --- | --- | --- | --- | --- |
| 1 | **Planning, analyze, design** | 2024-02-20 → 2024-04-01 (+41d) | 2024-04-17 → 2024-07-04 (+78d) | 42d? → 69d? |  |  | baseline start none → 2024-05-09; baseline finish none → 2024-07-05 |
| 2 | Project planning | 2024-02-20 → 2024-04-01 (+41d) | 2024-02-26 → 2024-04-01 (+35d) | 5d → 1d |  |  | resources none → Project manager; BI solution architect [50%]; baseline start none → 2024-05-09; baseline finish none → 2024-05-15 |
| 3 | Business requirements definition | 2024-02-27 → 2024-04-02 (+35d) | 2024-03-27 → 2024-05-01 (+35d) |  |  |  | resources none → Data modeler; baseline start none → 2024-05-16; baseline finish none → 2024-06-14 |
| 4 | Technical architecture design | 2024-03-28 → 2024-05-02 (+35d) | 2024-03-28 → 2024-05-06 (+39d) | 1d? → 3d | 50d → 78d |  | resources none → BI solution architect; baseline start none → 2024-06-17; baseline finish none → 2024-06-17 |
| 6 | Dimensional modelling | 2024-03-28 → 2024-05-02 (+35d) | 2024-03-29 → 2024-06-17 (+80d) | 2d → 33d |  |  | resources none → Data modeler; baseline start none → 2024-06-17; baseline finish none → 2024-06-18 |
| 7 | BI application design | 2024-03-28 → 2024-05-02 (+35d) | 2024-04-03 → 2024-05-08 (+35d) |  | 10d → 41d |  | resources none → Report developer; baseline start none → 2024-06-17; baseline finish none → 2024-06-21 |
| 8 | Physical design | 2024-04-01 → 2024-06-18 (+78d) | 2024-04-03 → 2024-06-20 (+78d) | 3d → 3d? |  |  | resources none → Database administrator; baseline start none → 2024-06-19; baseline finish none → 2024-06-21 |
| 9 | ETL design | 2024-04-04 → 2024-06-21 (+78d) | 2024-04-17 → 2024-07-04 (+78d) | 10d → 10d? |  |  | resources none → ETL developer; baseline start none → 2024-06-24; baseline finish none → 2024-07-05 |
| 10 | **Development** | 2024-03-29 → 2024-05-08 (+40d) | 2024-06-12 → 2024-08-29 (+78d) | 54d → 82d? |  |  | baseline start none → 2024-06-19; baseline finish none → 2024-08-30 |
| 11 | Resources & software installation | 2024-03-29 → 2024-05-08 (+40d) | 2024-04-03 → 2024-05-13 (+40d) | 4d → 4d? | 50d → 78d | 4 → 5 | was named Product selection & installation; resources none → Infrastructure specialist; Database administrator; baseline start none → 2024-06-19; baseline finish none → 2024-06-24 |
| 12 | ETL development | 2024-04-18 → 2024-07-05 (+78d) | 2024-06-12 → 2024-08-29 (+78d) | 40d → 40d? |  |  | resources none → ETL developer; baseline start none → 2024-07-08; baseline finish none → 2024-08-30 |
| 13 | BI application development | 2024-04-04 → 2024-05-09 (+35d) | 2024-05-29 → 2024-07-03 (+35d) | 40d → 40d? | 10d → 41d |  | resources none → Report developer; baseline start none → 2024-06-24; baseline finish none → 2024-08-16 |
| 14 | Deployment | 2024-06-13 → 2024-08-30 (+78d) | 2024-06-19 → 2024-09-05 (+78d) | 5d → 5d? |  |  | resources none → BI solution architect; baseline start none → 2024-09-02; baseline finish none → 2024-09-06 |
| 16 | RELEASE 1 | 2024-06-19 → 2024-09-19 (+92d) | 2024-06-19 → 2024-09-19 (+92d) |  |  | 14 → 15 | resources none → BI solution architect; baseline start none → 2024-09-20; baseline finish none → 2024-09-20 |

## Version 3 (saved 2024-03-31)

Note of the change: #592

Last finish 2024-09-19 → 2024-09-24 (+5d).

Changed:

| ID | Task | Start | Finish | Duration | Total float | Other |
| --- | --- | --- | --- | --- | --- | --- |
| 1 | **Planning, analyze, design** |  | 2024-07-04 → 2024-07-09 (+5d) | 69d? → 72d? |  |  |
| 2 | Project planning |  |  | 1d → 1d? |  | resources Project manager; BI solution architect [50%] → BI solution architect; Project manager |
| 3 | Business requirements definition |  |  | 22d → 22d? |  | resources Data modeler → System analyst; BI solution architect [20%] |
| 4 | Technical architecture design |  |  | 3d → 3d? | 78d → 81d | resources BI solution architect → System analyst [50%]; BI solution architect |
| 5 | Planning software |  |  | 1d → 1d? | 78d → 81d | resources Database administrator [50%]; Infrastructure specialist [50%]; BI solution architect → DevOps specialist; BI solution architect |
| 6 | Dimensional modelling | 2024-05-02 → 2024-05-07 (+5d) | 2024-06-17 → 2024-06-20 (+3d) | 33d → 33d? |  | resources Data modeler → System analyst; MSSQL developer |
| 7 | BI application design |  |  | 5d → 5d? | 41d → 44d |  |
| 8 | Physical design | 2024-06-18 → 2024-06-21 (+3d) | 2024-06-20 → 2024-06-25 (+5d) |  |  | resources Database administrator → MSSQL developer; DevOps specialist |
| 9 | ETL design | 2024-06-21 → 2024-06-26 (+5d) | 2024-07-04 → 2024-07-09 (+5d) |  |  | resources ETL developer → MSSQL developer |
| 10 | **Development** |  | 2024-08-29 → 2024-09-03 (+5d) | 82d? → 85d? |  |  |
| 11 | Resources & software installation |  |  |  | 78d → 81d | resources Infrastructure specialist; Database administrator → DevOps specialist |
| 12 | ETL development | 2024-07-05 → 2024-07-10 (+5d) | 2024-08-29 → 2024-09-03 (+5d) |  |  | resources ETL developer → MSSQL developer |
| 14 | Deployment | 2024-08-30 → 2024-09-04 (+5d) | 2024-09-05 → 2024-09-10 (+5d) |  |  | resources BI solution architect → BI solution architect; DevOps specialist |
| 15 | Testing | 2024-09-06 → 2024-09-11 (+5d) | 2024-09-19 → 2024-09-24 (+5d) | 10d → 10d? |  | resources Tester → Testers |
| 16 | RELEASE 1 | 2024-09-19 → 2024-09-24 (+5d) | 2024-09-19 → 2024-09-24 (+5d) | 0d → 0d? |  |  |
